# 舆情分析

How a schedule from MS Project changed from version to version. A marks actual dates.

## Version 1 (saved 2020-12-09)

| ID | WBS | Task | Duration | Start | Finish | Predecessors | Total float | Constraint |
| --- | --- | --- | --- | --- | --- | --- | --- | --- |
| 1 | 1 | **启动** | 3d | 2020-11-02 | 2020-11-04 |  |  |  |
| 2 |  | 组建核心团队 | 1d | 2020-11-02 | 2020-11-02 |  |  |  |
| 3 |  | 干系人分析 | 1d | 2020-11-02 | 2020-11-02 |  |  |  |
| 4 |  | 里程碑计划 | 1d | 2020-11-02 | 2020-11-02 |  |  |  |
| 5 |  | 制定项目章程 | 1d | 2020-11-03 | 2020-11-03 | 2, 3, 4 |  |  |
| 6 |  | 项目启动大会 | 1d | 2020-11-04 | 2020-11-04 | 5 |  |  |
| 7 | 2 | **规划** | 14d | 2020-11-05 | 2020-11-24 |  |  |  |
| 8 | 2.1 | **规划范围** | 4d | 2020-11-05 | 2020-11-10 |  |  |  |
| 9 |  | 制定需求说明书 | 1d | 2020-11-05 | 2020-11-05 | 6 |  |  |
| 10 |  | 界面设计 | 1d | 2020-11-06 | 2020-11-06 | 9 |  |  |
| 11 |  | 详细设计说明书 | 1d | 2020-11-06 | 2020-11-06 | 9 |  |  |
| 12 |  | 项目范围说明书 | 1d | 2020-11-06 | 2020-11-06 | 9 |  |  |
| 13 |  | 创建WBS | 1d | 2020-11-09 | 2020-11-09 | 10, 11, 12 |  |  |
| 14 |  | 形成范围基准 | 1d | 2020-11-10 | 2020-11-10 | 13 |  |  |
| 15 | 2.2 | **规划时间** | 8d | 2020-11-11 | 2020-11-20 |  |  |  |
| 16 |  | 排列工作包顺序 | 1d | 2020-11-11 | 2020-11-11 | 14 |  |  |
| 17 |  | 估算资源 | 1d | 2020-11-12 | 2020-11-12 | 16 |  |  |
| 18 |  | 估算持续时间 | 1d | 2020-11-13 | 2020-11-13 | 17 |  |  |
| 19 |  | 制定进度计划 | 1d | 2020-11-16 | 2020-11-16 | 18 |  |  |
| 20 |  | 形成进度基准 | 1d | 2020-11-17 | 2020-11-17 | 19 |  |  |
| 21 | 2.3 | **规划成本** | 3d | 2020-11-18 | 2020-11-20 |  |  |  |
| 22 |  | 项目成本估算 | 1d | 2020-11-18 | 2020-11-18 | 20 |  |  |
| 23 |  | 项目预算 | 1d | 2020-11-19 | 2020-11-19 | 22 |  |  |
| 24 |  | 形成范围基准 | 1d | 2020-11-20 | 2020-11-20 | 23 |  |  |
| 25 | 2.4 | **规划质量** | 2d | 2020-11-11 | 2020-11-12 |  |  |  |
| 26 |  | 制定测试计划 | 1d | 2020-11-11 | 2020-11-11 | 14 |  |  |
| 27 |  | 制定测试用例 | 1d | 2020-11-12 | 2020-11-12 | 26 |  |  |
| 28 | 2.5 | **规划人力资源** | 2d | 2020-11-13 | 2020-11-16 |  |  |  |
| 29 |  | 制定人力资源计划 | 1d | 2020-11-13 | 2020-11-13 | 17 |  |  |
| 30 |  | 制定人员配备管理计划 | 1d | 2020-11-16 | 2020-11-16 | 29 |  |  |
| 31 | 2.6 | **规划沟通** | 1d | 2020-11-17 | 2020-11-17 |  |  |  |
| 32 |  | 制定沟通管理计划 | 1d | 2020-11-17 | 2020-11-17 | 30 |  |  |
| 33 | 2.7 | **规划采购** | 2d | 2020-11-13 | 2020-11-16 |  |  |  |
| 34 |  | 自制外购分析 | 1d | 2020-11-13 | 2020-11-13 | 17 |  |  |
| 35 |  | 制定采购文件 | 1d | 2020-11-16 | 2020-11-16 | 34 |  |  |
| 36 | 2.8 | **规划风险** | 3d | 2020-11-21 | 2020-11-24 |  |  |  |
| 37 |  | 识别风险 | 1d | 2020-11-21 | 2020-11-21 | 15, 21, 25, 28 |  | start no earlier than 2020-11-21 |
| 38 |  | 风险分析 | 1d | 2020-11-22 | 2020-11-22 | 37 |  | start no earlier than 2020-11-22 |
| 39 |  | 制定风险登记册 | 1d | 2020-11-23 | 2020-11-23 | 38 |  | start no earlier than 2020-11-23 |
| 40 |  | 规划整合 | 1d | 2020-11-24 | 2020-11-24 | 39 |  | start no earlier than 2020-11-24 |
| 41 | 3 | **执行与监控** | 20.46d | 2020-11-25 | 2020-12-23 |  | 0d |  |
| 42 |  | 组建项目团队 | 1d | 2020-11-25 | 2020-11-25 | 7 |  | start no earlier than 2020-11-25 |
| 43 | 3.2 | **项目执行** | 19d | 2020-11-25 | 2020-12-22 |  |  |  |
| 44 | 3.2.1 | **主页** | 5d | 2020-11-25 | 2020-12-01 |  |  |  |
| 45 | 3.2.1.1 | **数据概览** | 2d | 2020-11-25 | 2020-11-26 |  |  |  |
| 46 |  | 数据平台概览 | 2d | 2020-11-25 | 2020-11-26 | 10 |  | start no earlier than 2020-11-25 |
| 47 | 3.2.1.2 | **数据监控** | 2d | 2020-11-27 | 2020-11-30 |  |  |  |
| 48 |  | 实时监控 | 2d | 2020-11-25 | 2020-11-26 | 10 |  |  |
| 49 | 3.2.1.3 | **报警管理** | 4d | 2020-11-25 | 2020-11-30 |  |  |  |
| 50 |  | 报警通知 | 2d | 2020-11-25 | 2020-11-26 | 10 |  |  |
| 51 |  | 智能预警配置 | 2d | 2020-11-27 | 2020-11-30 | 50 |  |  |
| 52 | 3.2.1.4 | **系统管理** | 4d | 2020-11-25 | 2020-11-30 |  |  |  |
| 53 |  | 用户管理 | 2d | 2020-11-25 | 2020-11-26 | 10 |  |  |
| 54 |  | 权限管理 | 2d | 2020-11-27 | 2020-11-30 | 53 |  |  |
| 55 | 3.2.2 | **后台** | 14d | 2020-11-28 | 2020-12-16 |  |  |  |
| 56 | 3.2.2.1 | **爬虫模块** | 9d | 2020-11-28 | 2020-12-09 |  |  |  |
| 57 |  | 对网站进行爬取 | 2d | 2020-11-28 | 2020-12-01 | 42 |  |  |
| 58 |  | 对数据进行抓取和处理 | 4d | 2020-12-02 | 2020-12-08 | 57 |  |  |
| 59 |  | 数据存储 | 1d | 2020-12-08 | 2020-12-09 | 58 |  |  |
| 60 | 3.2.2.2 | **情感分析模块** | 9d | 2020-11-28 | 2020-12-09 |  |  |  |
| 61 |  | 对数据进行预处理 | 2d | 2020-11-28 | 2020-12-01 | 42 |  |  |
| 62 |  | 计算词向量 | 1d | 2020-12-02 | 2020-12-03 | 61 |  |  |
| 63 |  | 训练模型 | 3d | 2020-12-04 | 2020-12-09 | 62 |  |  |
| 64 | 3.2.2.3 | **热词变化词频模块** | 14d | 2020-11-28 | 2020-12-16 |  |  |  |
| 65 |  | 连接ES | 2d | 2020-11-28 | 2020-12-01 | 42 |  |  |
| 66 |  | 将数据存储进ES | 1d | 2020-12-02 | 2020-12-03 | 65 |  |  |
| 67 |  | 指定时间段热点追踪 | 2d | 2020-12-04 | 2020-12-08 | 66 |  |  |
| 68 |  | 指定时间段情感预警 | 5d | 2020-12-09 | 2020-12-16 | 67 |  |  |
| 69 | 3.3 | **项目监控** | 3d | 2020-11-26 | 2020-11-28 |  |  |  |
| 70 |  | 各项指标监控 | 1d | 2020-11-26 | 2020-11-26 | 42 |  | start no earlier than 2020-11-26 |

| ID | WBS | Task | Duration | Start | Finish | Predecessors | Total float | Constraint |
| --- | --- | --- | --- | --- | --- | --- | --- | --- |
| 71 |  | 监控评审 | 1d | 2020-11-27 | 2020-11-27 | 70 |  | start no earlier than 2020-11-27 |
| 72 |  | 变更评审 | 1d | 2020-11-28 | 2020-11-28 | 71 |  | start no earlier than 2020-11-28 |
| 73 |  | 例会 | 1d | 2020-11-26 | 2020-11-26 | 42 |  | start no earlier than 2020-11-26 |
| 74 | 3.4 | **管理干系人** | 3d | 2020-11-26 | 2020-11-30 |  |  |  |
| 75 |  | 发布项目信息 | 1d | 2020-11-26 | 2020-11-26 | 42 |  | start no earlier than 2020-11-26 |
| 76 |  | 报告监控指标 | 1d | 2020-11-27 | 2020-11-27 | 42 |  |  |
| 77 |  | 干系人沟通 | 1d | 2020-11-30 | 2020-11-30 | 42 |  |  |
| 78 | 3.5 | **团队建设** | 3d | 2020-11-30 | 2020-12-02 |  |  |  |
| 79 |  | 培训 | 2d | 2020-11-30 | 2020-12-01 | 42 |  |  |
| 80 |  | 娱乐活动 | 1d | 2020-12-02 | 2020-12-02 | 42 |  |  |
| 81 |  | 沟通 | 1d | 2020-12-02 | 2020-12-02 | 42 |  |  |
| 82 |  | 采购 | 1d | 2020-12-03 | 2020-12-04 | 42 |  |  |
| 83 |  | 项目验收 | 1.33d | 2020-12-22 | 2020-12-23 | 43 | 0d |  |
| 84 | 4 | **收尾** | 7.5d | 2020-12-23 | 2021-01-01 |  | 0d |  |
| 85 |  | 项目终验 | 2.86d | 2020-12-23 | 2020-12-28 | 83 | 4.64d |  |
| 86 |  | 结束采购 | 1d | 2020-12-23 | 2020-12-24 | 83 | 6.5d |  |
| 87 |  | 项目内部收尾 | 7.5d | 2020-12-23 | 2021-01-01 | 83 | 0d |  |

## Version 2 (saved 2020-12-09)

Last finish stays 2021-01-01.

Added:

| ID | Task | Duration | Start | Finish | Resources |
| --- | --- | --- | --- | --- | --- |
| 1 | **舆情分析监控平台** | 44.83d | 2020-11-02 | 2021-01-01 | 储备资金 [0.1%]; 间接成本 [0.1%] |

Changed:

| ID | Task | Other |
| --- | --- | --- |
| 2 | **启动** | resources none → 储备资金 [0.1%]; 间接成本 [0.1%] |
| 8 | **规划** | resources none → 储备资金 [0.1%]; 间接成本 [0.1%] |
| 42 | **执行与监控** | resources none → 储备资金 [0.1%]; 间接成本 [0.1%] |
| 85 | **收尾** | resources none → 储备资金 [0.1%]; 间接成本 [0.1%] |
